# 智维集控平台

Schedule from a web Gantt chart, 2026-06-08 to 2026-09-12.
Every day is a working day

## Schedule

| ID | WBS | Task | Duration | Start | Finish | Predecessors | Status |
| --- | --- | --- | --- | --- | --- | --- | --- |
| 2 | 1 | **平台基础能力** | 11d | 2026-06-08 | 2026-06-18 |  |  |
| 3 | 1.1 | 数据权限管理 | 2d | 2026-06-08 | 2026-06-09 |  |  |
| 4 | 1.2 | 租户管理 | 2d | 2026-06-10 | 2026-06-11 | 3 | waiting |
| 5 | 1.3 | 国际化 | 2d | 2026-06-12 | 2026-06-13 | 4 | waiting |
| 6 | 1.4 | 组织权限管理 | 3d | 2026-06-14 | 2026-06-16 | 5 | waiting |
| 7 | 1.5 | 审计日志 | 2d | 2026-06-17 | 2026-06-18 | 6 | waiting |
| 8 | 2 | **3.6.6 配置管理优化与电站快速接入能力建设** | 24d | 2026-06-19 | 2026-07-12 |  |  |
| 9 | 2.1 | 场站管理 | 2d | 2026-06-19 | 2026-06-20 | 2 | waiting |
| 10 | 2.2 | 设备类型管理 | 1d | 2026-06-21 | 2026-06-21 | 9 | waiting |
| 11 | 2.3 | 设备型号管理 | 1d | 2026-06-22 | 2026-06-22 | 10 | waiting |
| 12 | 2.4 | 设备管理 | 2d | 2026-06-23 | 2026-06-24 | 11 | waiting |
| 13 | 2.5 | 测点管理 | 2d | 2026-07-01 | 2026-07-02 | 21 | waiting |
| 14 | 2.6 | 测点物模型映射配置 | 2d | 2026-07-03 | 2026-07-04 | 13 | waiting |
| 15 | 2.7 | 测点计算规则配置 | 2d | 2026-07-05 | 2026-07-06 | 14 | waiting |
| 16 | 2.8 | 告警规则配置 | 1d | 2026-07-07 | 2026-07-07 | 15 | waiting |
| 17 | 2.9 | 告警屏蔽管理 | 1d | 2026-07-08 | 2026-07-08 | 16 | waiting |
| 18 | 2.10 | 告警通知管理 | 2d | 2026-07-09 | 2026-07-10 | 17 | waiting |
| 19 | 2.11 | 数据清洗规则管理 | 1d | 2026-07-11 | 2026-07-11 | 18 | waiting |
| 20 | 2.12 | 数据补录规则管理 | 1d | 2026-07-12 | 2026-07-12 | 19 | waiting |
| 21 | 3 | **3.5.1 一体化驾驶舱指标体系梳理** | 6d | 2026-06-25 | 2026-06-30 |  |  |
| 22 | 3.1 | 指标管理 | 1d | 2026-06-25 | 2026-06-25 | 12 | waiting |
| 23 | 3.2 | 物模型管理 | 5d | 2026-06-26 | 2026-06-30 | 22 | waiting |
| 24 | 4 | **3.5.3 一体化驾驶舱指标数据计算引擎开发** | 13d | 2026-07-16 | 2026-07-28 |  |  |
| 25 | 4.1 | 实时/历史流数据处理引擎 | 5d | 2026-07-16 | 2026-07-20 | 119 | waiting |
| 26 | 4.2 | 数据清洗服务 | 1d | 2026-07-21 | 2026-07-21 | 25 | waiting |
| 27 | 4.3 | 告警计算服务器 | 1d | 2026-07-22 | 2026-07-22 | 26 | waiting |
| 28 | 4.4 | 计算规则引擎 | 2d | 2026-07-23 | 2026-07-24 | 27 | waiting |
| 29 | 4.5 | 数据存储服务 | 1d | 2026-07-26 | 2026-07-26 | 28, 31 | waiting |
| 30 | 4.6 | 缓存同步服务 | 2d | 2026-07-27 | 2026-07-28 | 29 | waiting |
| 31 | 5 | 3.6.3 时序数据库与采集数据存储架构优化 | 1d | 2026-07-25 | 2026-07-25 | 28 | waiting |

| ID | WBS | Task | Duration | Start | Finish | Predecessors | Status |
| --- | --- | --- | --- | --- | --- | --- | --- |
| 32 | 6 | **3.3 一体化驾驶舱专业视图板块** | 22d | 2026-07-29 | 2026-08-19 |  |  |
| 33 | 6.1 | 混合能源类型场站概览 | 2d | 2026-07-29 | 2026-07-30 | 24 | waiting |
| 34 | 6.2 | 光伏场站概览 | 1d | 2026-07-31 | 2026-07-31 | 33 | waiting |
| 35 | 6.3 | 逆变器状态监视 | 1d | 2026-08-01 | 2026-08-01 | 34 | waiting |
| 36 | 6.4 | 设备发电监视 | 1d | 2026-08-02 | 2026-08-02 | 35 | waiting |
| 37 | 6.5 | 升压站监视 | 1d | 2026-08-03 | 2026-08-03 | 36 | waiting |
| 38 | 6.6 | 集电线路监视 | 1d | 2026-08-04 | 2026-08-04 | 37 | waiting |
| 39 | 6.7 | 箱变监视 | 1d | 2026-08-05 | 2026-08-05 | 38 | waiting |
| 40 | 6.8 | 逆变器监视 | 1d | 2026-08-06 | 2026-08-06 | 39 | waiting |
| 41 | 6.9 | 气象站监视 | 1d | 2026-08-07 | 2026-08-07 | 40 | waiting |
| 42 | 6.10 | 电表监视 | 1d | 2026-08-08 | 2026-08-08 | 41 | waiting |
| 43 | 6.11 | 其他设备监视 | 1d | 2026-08-09 | 2026-08-09 | 42 | waiting |
| 44 | 6.12 | 光伏场站概览 | 1d | 2026-08-10 | 2026-08-10 | 43 | waiting |
| 45 | 6.13 | 风机状态监视 | 1d | 2026-08-11 | 2026-08-11 | 44 | waiting |
| 46 | 6.14 | 测风塔监视 | 1d | 2026-08-12 | 2026-08-12 | 45 | waiting |
| 47 | 6.15 | 储能电站概览 | 1d | 2026-08-13 | 2026-08-13 | 46 | waiting |
| 48 | 6.16 | 储能单元监视 | 1d | 2026-08-14 | 2026-08-14 | 47 | waiting |
| 49 | 6.17 | PCS监视 | 1d | 2026-08-15 | 2026-08-15 | 48 | waiting |
| 50 | 6.18 | 电池堆监视 | 1d | 2026-08-16 | 2026-08-16 | 49 | waiting |
| 51 | 6.19 | 电池簇监视 | 1d | 2026-08-17 | 2026-08-17 | 50 | waiting |
| 52 | 6.20 | 电池包监视 | 1d | 2026-08-18 | 2026-08-18 | 51 | waiting |
| 53 | 6.21 | 电芯监视 | 1d | 2026-08-19 | 2026-08-19 | 52 | waiting |
| 54 | 7 | **3.1.5 智慧场站门户** | 7d | 2026-08-01 | 2026-08-07 |  |  |
| 55 | 7.1 | 场站总览 | 1d | 2026-08-01 | 2026-08-01 | 34 | waiting |
| 56 | 7.2 | 区域总览 | 1d | 2026-08-02 | 2026-08-02 | 55 | waiting |
| 57 | 7.3 | 样板电站视图 | 1d | 2026-08-03 | 2026-08-03 | 56 | waiting |
| 58 | 7.4 | 标杆电站视图 | 1d | 2026-08-04 | 2026-08-04 | 57 | waiting |
| 59 | 7.5 | 低发电绩效视图 | 1d | 2026-08-05 | 2026-08-05 | 58 | waiting |
| 60 | 7.6 | 低并网消纳视图 | 1d | 2026-08-06 | 2026-08-06 | 59 | waiting |
| 61 | 7.7 | 高风险电站视图 | 1d | 2026-08-07 | 2026-08-07 | 60 | waiting |

| ID | WBS | Task | Duration | Start | Finish | Predecessors | Status |
| --- | --- | --- | --- | --- | --- | --- | --- |
| 62 | 8 | **3.6.1 风光储一体化数据结构与档案体系升级** | 7d | 2026-07-12 | 2026-07-18 |  |  |
| 63 | 8.1 | 公司档案迁移 | 1d | 2026-07-12 | 2026-07-12 | 19 | waiting |
| 64 | 8.2 | 型号档案迁移 | 1d | 2026-07-13 | 2026-07-13 | 63 | waiting |
| 65 | 8.3 | 设备分类迁移 | 1d | 2026-07-14 | 2026-07-14 | 64 | waiting |
| 66 | 8.4 | 设备档案迁移 | 1d | 2026-07-15 | 2026-07-15 | 65 | waiting |
| 67 | 8.5 | 电站档案迁移 | 1d | 2026-07-16 | 2026-07-16 | 66 | waiting |
| 68 | 8.6 | 测点配置迁移 | 2d | 2026-07-17 | 2026-07-18 | 67 | waiting |
| 69 | 9 | **3.6.4 原有光伏电站历史数据迁移实施** | 5d | 2026-07-19 | 2026-07-23 |  |  |
| 70 | 9.1 | 实时数据迁移 | 3d | 2026-07-19 | 2026-07-21 | 68 | waiting |
| 71 | 9.2 | 统计数据迁移 | 2d | 2026-07-22 | 2026-07-23 | 70 | waiting |
| 72 | 10 | **3.6.2 风光储统一运维功能迁移** | 30d | 2026-07-24 | 2026-08-22 |  |  |
| 73 | 10.1 | 运行日志数据迁移和查询功能开发 | 2d | 2026-07-24 | 2026-07-25 | 71 | waiting |
| 74 | 10.2 | 缺陷单数据迁移与查询功能开发 | 2d | 2026-07-26 | 2026-07-27 | 73 | waiting |
| 75 | 10.3 | 检修预试数据迁移与查询功能开发 | 2d | 2026-07-28 | 2026-07-29 | 74 | waiting |
| 76 | 10.4 | 巡检数据迁移与查询功能开发 | 2d | 2026-07-30 | 2026-07-31 | 75 | waiting |
| 77 | 10.5 | 抢修单数据迁移与查询功能开发 | 2d | 2026-08-01 | 2026-08-02 | 76 | waiting |
| 78 | 10.6 | 典型工作票数据迁移与查询功能开发 | 2d | 2026-08-03 | 2026-08-04 | 77 | waiting |
| 79 | 10.7 | 正式工作牌数据迁移与查询功能开发 | 2d | 2026-08-05 | 2026-08-06 | 78 | waiting |
| 80 | 10.8 | 典型操作票数据迁移与查询功能开发 | 2d | 2026-08-07 | 2026-08-08 | 79 | waiting |
| 81 | 10.9 | 正式操作票数据迁移与查询功能开发 | 2d | 2026-08-09 | 2026-08-10 | 80 | waiting |
| 82 | 10.10 | 备品备件规格数据迁移与查询功能开发 | 2d | 2026-08-11 | 2026-08-12 | 81 | waiting |
| 83 | 10.11 | 仓库数据迁移与查询功能开发 | 2d | 2026-08-13 | 2026-08-14 | 82 | waiting |
| 84 | 10.12 | 库存数据迁移与查询功能开发 | 2d | 2026-08-15 | 2026-08-16 | 83 | waiting |
| 85 | 10.13 | 出入库数据迁移与查询功能开发 | 2d | 2026-08-17 | 2026-08-18 | 84 | waiting |
| 86 | 10.14 | 库存盘点数据迁移与查询功能开发 | 2d | 2026-08-19 | 2026-08-20 | 85 | waiting |
| 87 | 10.15 | 运维文档数据迁移与查询功能开发 | 2d | 2026-08-21 | 2026-08-22 | 86 | waiting |

| ID | WBS | Task | Duration | Start | Finish | Predecessors | Status |
| --- | --- | --- | --- | --- | --- | --- | --- |
| 88 | 11 | **3.7.1 智慧场站档案资料数据接入** | 6d | 2026-07-19 | 2026-07-24 |  |  |
| 89 | 11.1 | 电站数据同步接口 | 1d | 2026-07-19 | 2026-07-19 | 68 | waiting |
| 90 | 11.2 | 设备类型数据同步接口 | 1d | 2026-07-20 | 2026-07-20 | 89 | waiting |
| 91 | 11.3 | 型号数据同步接口 | 1d | 2026-07-21 | 2026-07-21 | 90 | waiting |
| 92 | 11.4 | 设备数据同步接口 | 1d | 2026-07-22 | 2026-07-22 | 91 | waiting |
| 93 | 11.5 | 同步任务管理和失败重试功能开发 | 2d | 2026-07-23 | 2026-07-24 | 92 | waiting |
| 94 | 12 | **3.7.2 智慧场站运行监测类数据接入** | 6d | 2026-07-25 | 2026-07-30 |  |  |
| 95 | 12.1 | 设备运行数据接口 | 2d | 2026-07-25 | 2026-07-26 | 93 | waiting |
| 96 | 12.2 | 电站运行数据接口 | 2d | 2026-07-27 | 2026-07-28 | 95 | waiting |
| 97 | 12.3 | 事件数据接口 | 2d | 2026-07-29 | 2026-07-30 | 96 | waiting |
| 98 | 13 | 3.7.3 智慧场站系统参数类数据接入与同步建设 | 2d | 2026-07-31 | 2026-08-01 | 97 | waiting |
| 99 | 14 | **3.6.5 面向一体化驾驶舱的集成适配开发** | 8d | 2026-08-20 | 2026-08-27 |  |  |
| 100 | 14.1 | 档案数据查询集成 | 2d | 2026-08-20 | 2026-08-21 | 53 | waiting |
| 101 | 14.2 | 实时运行数据集成 | 2d | 2026-08-22 | 2026-08-23 | 100 | waiting |
| 102 | 14.3 | 历史运行数据集成 | 2d | 2026-08-24 | 2026-08-25 | 101 | waiting |
| 103 | 14.4 | 统计数据集成 | 2d | 2026-08-26 | 2026-08-27 | 102 | waiting |
| 104 | 15 | **3.5.2 一体化驾驶舱指标数据集市设计开发** | 8d | 2026-08-28 | 2026-09-04 |  |  |
| 105 | 15.1 | 档案类数据集市 | 2d | 2026-08-28 | 2026-08-29 | 103 | waiting |
| 106 | 15.2 | 运行类数据集市 | 2d | 2026-08-30 | 2026-08-31 | 105 | waiting |
| 107 | 15.3 | 数据集市指标管理 | 2d | 2026-09-01 | 2026-09-02 | 106 | waiting |
| 108 | 15.4 | 数据集市计算任务管理 | 2d | 2026-09-03 | 2026-09-04 | 107 | waiting |
| 109 | 16 | **3.5.4 一体化驾驶舱指标数据服务接口** | 8d | 2026-09-05 | 2026-09-12 |  |  |
| 110 | 16.1 | 指标查询接口 | 2d | 2026-09-05 | 2026-09-06 | 108 | waiting |
| 111 | 16.2 | 趋势分析接口 | 1d | 2026-09-07 | 2026-09-07 | 110 | waiting |
| 112 | 16.3 | 排行接口 | 1d | 2026-09-08 | 2026-09-08 | 111 | waiting |
| 113 | 16.4 | 明细接口 | 1d | 2026-09-09 | 2026-09-09 | 112 | waiting |
| 114 | 16.5 | 对象接口 | 1d | 2026-09-10 | 2026-09-10 | 113 | waiting |
| 115 | 16.6 | 证据接口 | 1d | 2026-09-11 | 2026-09-11 | 114 | waiting |
| 116 | 16.7 | 筛选维度接口 | 1d | 2026-09-12 | 2026-09-12 | 115 | waiting |

| ID | WBS | Task | Duration | Start | Finish | Predecessors | Status |
| --- | --- | --- | --- | --- | --- | --- | --- |
| 117 | 17 | **3.5.5 一体化驾驶舱指标数据实施** | 10d | 2026-07-13 | 2026-07-22 |  |  |
| 118 | 17.1 | 指标配置加载 | 1d | 2026-07-13 | 2026-07-13 | 8 | waiting |
| 119 | 17.2 | 数据接入服务 | 2d | 2026-07-14 | 2026-07-15 | 118 | waiting |
| 120 | 17.3 | 历史数据补齐服务 | 4d | 2026-07-16 | 2026-07-19 | 4, 119 | waiting |
| 121 | 17.4 | 数据质量统计 | 3d | 2026-07-20 | 2026-07-22 | 120 | waiting |
| 122 | 18 | 3.1.1 展示汇报门户 | 1d | 2026-06-08 | 2026-06-08 |  |  |
